# MEx_Plan

Schedule from MS Project, 2017-05-08 to 2017-08-25, A marks actual dates.

## Calendars

- Standard: Mon-Fri 08:00-12:00, 13:00-17:00; Sat-Sun off.

## Resources

| Resource |
| --- |
| MEx Team |
| MEx Team and Supervisor |
| HoangPM |
| TuDN |
| AnhLB |
| PhongDC |
| LuatPD |
| HuongLX |
| PhonngDC |
| V |
| Supervisor |

## Schedule

| ID | WBS | Task | Type | Duration | Start | Finish | Complete | Remaining | Total slack | Resources | Work | Actual work |
| --- | --- | --- | --- | --- | --- | --- | --- | --- | --- | --- | --- | --- |
| 1 | 1 | **Capstone Project Plan** |  | 80d | 2017-05-08 A | 2017-08-25 | 99% | 0.4d | 0d |  | 5304h | 5288h |
| 2 | 1.1 | **Phase 1: Create Function required for Car** |  | 45d | 2017-05-08 A | 2017-07-07 A | 100% |  |  |  | 2384h | 2384h |
| 3 | 1.1.1 | **1.1. Initiating** |  | 3d | 2017-05-08 A | 2017-05-10 A | 100% |  |  |  | 32h | 32h |
| 4 | 1.1.1.1 | 1.1.1. Generate Project Ideas | manual | 2d | 2017-05-08 A | 2017-05-09 A | 100% |  |  | MEx Team | 16h | 16h |
| 5 | 1.1.1.2 | 1.1.2. Ideas Review | manual | 1d | 2017-05-09 A | 2017-05-09 A | 100% |  |  | MEx Team | 8h | 8h |
| 6 | 1.1.1.3 | 1.1.3. Meeting for closing final topic and set group working rules | manual | 1d | 2017-05-10 A | 2017-05-10 A | 100% |  |  | MEx Team and Supervisor | 8h | 8h |
| 7 | 1.1.2 | **1.2. Planing and preparing** |  | 11d | 2017-05-12 A | 2017-05-26 A | 100% |  |  |  | 616h | 616h |
| 8 | 1.1.2.1 | 1.2.1. Requirement analysis and Planning | manual | 2d | 2017-05-12 A | 2017-05-15 A | 100% |  |  | MEx Team | 16h | 16h |
| 9 | 1.1.2.2 | 1.2.2. Tools and devices analysis and choosing | manual | 1d | 2017-05-15 A | 2017-05-15 A | 100% |  |  | MEx Team | 8h | 8h |
| 10 | 1.1.2.3 | 1.2.3. Download and intall softwares | manual | 2d | 2017-05-16 A | 2017-05-17 A | 100% |  |  | MEx Team | 16h | 16h |
| 11 | 1.1.2.4 | 1.2.4. Order Pi-kit and Wifi sheild from over sea | manual | 8d | 2017-05-17 A | 2017-05-26 A | 100% |  |  | HoangPM; TuDN | 128h | 128h |
| 12 | 1.1.2.5 | **1.2.5. Project Integration Management** |  | 3d | 2017-05-12 A | 2017-05-16 A | 100% |  |  |  | 24h | 24h |
| 13 | 1.1.2.5.1 | Develop Project management plan | manual | 3d | 2017-05-12 A | 2017-05-16 A | 100% |  |  | AnhLB | 24h | 24h |
| 14 | 1.1.2.6 | 1.2.6. Setup project environment | manual | 3d | 2017-05-12 A | 2017-05-16 A | 100% |  |  | MEx Team | 24h | 24h |
| 15 | 1.1.2.7 | **1.2.7. Project Scope Management** |  | 3d | 2017-05-12 A | 2017-05-16 A | 100% |  |  |  | 40h | 40h |
| 16 | 1.1.2.7.1 | 1.2.7.1. Define project scope | manual | 2d | 2017-05-12 A | 2017-05-15 A | 100% |  |  | MEx Team | 16h | 16h |
| 17 | 1.1.2.7.2 | 1.2.7.2. Collect requirements | manual | 3d | 2017-05-12 A | 2017-05-16 A | 100% |  |  | MEx Team | 24h | 24h |
| 18 | 1.1.2.8 | **1.2.8. Project Time Management** |  | 5d | 2017-05-16 A | 2017-05-21 A | 100% |  |  |  | 120h | 120h |
| 19 | 1.1.2.8.1 | 1.2.8.1. Build work breakdown | manual | 5d | 2017-05-16 A | 2017-05-21 A | 100% |  |  | AnhLB | 40h | 40h |
| 20 | 1.1.2.8.2 | 1.2.8.2. Develop resources plan | manual | 5d | 2017-05-16 A | 2017-05-21 A | 100% |  |  | HoangPM; HuongLX | 80h | 80h |
| 21 | 1.1.2.9 | **1.2.9. Project Quality Management** |  | 4d | 2017-05-19 A | 2017-05-24 A | 100% |  |  |  | 64h | 64h |
| 22 | 1.1.2.9.1 | 1.2.9.1. Create quality criteria | manual | 2d | 2017-05-19 A | 2017-05-21 A | 100% |  |  | AnhLB; LuatPD | 32h | 32h |
| 23 | 1.1.2.9.2 | 1.2.9.2. Create quality management plan | manual | 4d | 2017-05-21 A | 2017-05-24 A | 100% |  |  | LuatPD | 32h | 32h |
| 24 | 1.1.2.10 | **1.2.10. Project Risk Management** |  | 10d | 2017-05-15 A | 2017-05-26 A | 100% |  |  |  | 176h | 176h |
| 25 | 1.1.2.10.1 | 1.2.10.1. Identify risks | manual | 8d | 2017-05-15 A | 2017-05-24 A | 100% |  |  | LuatPD; TuDN | 128h | 128h |
| 26 | 1.1.2.10.2 | 1.2.10.2. Plan risk mamagement | manual | 3d | 2017-05-24 A | 2017-05-26 A | 100% |  |  | LuatPD; TuDN | 48h | 48h |

| ID | WBS | Task | Type | Duration | Start | Finish | Complete | Resources | Work | Actual work |
| --- | --- | --- | --- | --- | --- | --- | --- | --- | --- | --- |
| 27 | 1.1.3 | **1.3. Technical understanding** |  | 11d | 2017-05-16 A | 2017-05-30 A | 100% |  | 640h | 640h |
| 28 | 1.1.3.1 | 1.3.1. Studying Android and Java development | manual | 11d | 2017-05-16 A | 2017-05-30 A | 100% | MEx Team | 88h | 88h |
| 29 | 1.1.3.2 | 1.3.2. Study about MEx technology | manual | 6d | 2017-05-16 A | 2017-05-23 A | 100% | AnhLB | 48h | 48h |
| 30 | 1.1.3.3 | 1.3.3. Study Wifi communication and module Wifi Sheild | manual | 9d | 2017-05-16 A | 2017-05-26 A | 100% | HoangPM; PhongDC | 144h | 144h |
| 31 | 1.1.3.4 | 1.3.4. Study about Arduino, Pi | manual | 9d | 2017-05-16 A | 2017-05-26 A | 100% | LuatPD; HuongLX | 144h | 144h |
| 32 | 1.1.3.5 | 1.3.5. Study about Circuit of hardware | manual | 9d | 2017-05-16 A | 2017-05-26 A | 100% | TuDN; HuongLX; LuatPD | 216h | 216h |
| 33 | 1.1.4 | **1.4. Design** |  | 6d | 2017-05-29 A | 2017-06-05 A | 100% |  | 192h | 192h |
| 34 | 1.1.4.1 | **1.4.1. Design Car model for MEx System** |  | 6d | 2017-05-29 A | 2017-06-05 A | 100% |  | 48h | 48h |
| 35 | 1.1.4.1.1 | 1.4.1.1. Create a Car with 3 servo | manual | 6d | 2017-05-29 A | 2017-06-05 A | 100% | HuongLX | 48h | 48h |
| 36 | 1.1.4.2 | 1.4.2. Design Controller for MEx system | manual | 3d | 2017-06-01 A | 2017-06-05 A | 100% | AnhLB | 32h | 32h |
| 37 | 1.1.4.3 | 1.4.3. Embedded and Android Software Archtecture design | manual | 3d | 2017-06-01 A | 2017-06-05 A | 100% | PhongDC; HoangPM | 48h | 48h |
| 38 | 1.1.4.4 | 1.4.4. Embedded and Android Software Detailed design | manual | 3d | 2017-06-01 A | 2017-06-05 A | 100% | TuDN; LuatPD; PhongDC | 64h | 64h |
| 39 | 1.1.5 | **1.5. Implementation** |  | 18d | 2017-06-01 A | 2017-06-26 A | 100% |  | 664h | 664h |
| 40 | 1.1.5.1 | 1.5.1. Assemble Components | manual | 6d | 2017-06-05 A | 2017-06-12 A | 100% | AnhLB | 48h | 48h |
| 41 | 1.1.5.2 | 1.5.2. Code for wifi communication between Android app and Car (arduino) | manual | 6d | 2017-06-12 A | 2017-06-19 A | 100% | PhongDC; HoangPM | 96h | 96h |
| 42 | 1.1.5.3 | 1.5.3. Code for Car model embedded software module | manual | 18d | 2017-06-01 A | 2017-06-26 A | 100% | HuongLX; HoangPM | 144h | 144h |
| 43 | 1.1.5.4 | 1.5.4. Code for Android application | manual | 17d | 2017-06-01 A | 2017-06-23 A | 100% | PhongDC; TuDN | 136h | 136h |
| 44 | 1.1.5.5 | 1.5.5. Make move (forward, backward, turnleft, turnright) controlled by Android app | manual | 10d | 2017-06-12 A | 2017-06-23 A | 100% | AnhLB; HuongLX; LuatPD | 240h | 240h |
| 45 | 1.1.6 | **1.6. Testing** |  | 18d | 2017-06-14 A | 2017-07-07 A | 100% |  | 240h | 240h |
| 46 | 1.1.6.1 | 1.6.1. Design test cases | manual | 4d | 2017-06-14 A | 2017-06-19 A | 100% | TuDN; LuatPD | 64h | 64h |
| 47 | 1.1.6.2 | 1.6.2. Hardware unit test | manual | 3d | 2017-06-20 A | 2017-06-22 A | 100% | HuongLX; HoangPM | 48h | 48h |
| 48 | 1.1.6.3 | 1.6.3. Hardware system test | manual | 2d | 2017-06-23 A | 2017-06-25 A | 100% | HuongLX; HoangPM | 32h | 32h |
| 49 | 1.1.6.4 | 1.6.4. Software unit test | manual | 3d | 2017-06-27 A | 2017-06-29 A | 100% | PhongDC; TuDN | 24h | 24h |
| 50 | 1.1.6.5 | 1.6.5. Software system test | manual | 2d | 2017-06-30 A | 2017-07-01 A | 100% | PhongDC; LuatPD | 32h | 32h |
| 51 | 1.1.6.6 | 1.6.6. System test | manual | 5d | 2017-07-03 A | 2017-07-07 A | 100% | MEx Team | 40h | 40h |

| ID | WBS | Task | Type | Duration | Start | Finish | Complete | Remaining | Total slack | Resources | Work | Actual work |
| --- | --- | --- | --- | --- | --- | --- | --- | --- | --- | --- | --- | --- |
| 52 | 1.2 | **Phase 2: Additional Function and Controller** |  | 30d | 2017-07-10 A | 2017-08-18 | 98% | 0.53d | 0d |  | 1904h | 1888h |
| 53 | 1.2.1 | **2.1. Planning and preparing** |  | 4d | 2017-07-10 A | 2017-07-13 A | 100% |  |  |  | 64h | 64h |
| 54 | 1.2.1.1 | 2.1.1. Study python and Rasberry Pi | manual | 4d | 2017-07-10 A | 2017-07-13 A | 100% |  |  | AnhLB; HuongLX | 64h | 64h |
| 55 | 1.2.2 | **2.2. Design** |  | 7d | 2017-07-13 A | 2017-07-21 A | 100% |  |  |  | 224h | 224h |
| 56 | 1.2.2.1 | 2.2.1. Design for Hardware | manual | 6d | 2017-07-13 A | 2017-07-20 A | 100% |  |  | MEx Team | 48h | 48h |
| 57 | 1.2.2.2 | 2.2.2. Design for embedded software | manual | 4d | 2017-07-17 A | 2017-07-20 A | 100% |  |  | HoangPM; HuongLX; LuatPD | 96h | 96h |
| 58 | 1.2.2.3 | 2.2.3. Update Android Software Archtecture design | manual | 5d | 2017-07-17 A | 2017-07-21 A | 100% |  |  | PhongDC; TuDN | 80h | 80h |
| 59 | 1.2.3 | **2.3. Implementation** |  | 25d | 2017-07-10 A | 2017-08-11 | 97% | 0.74d | 0d |  | 1264h | 1248h |
| 60 | 1.2.3.1 | 2.3.1. Assemble components | manual | 13d | 2017-07-19 A | 2017-08-04 A | 100% |  |  | AnhLB; HuongLX; PhongDC | 312h | 312h |
| 61 | 1.2.3.2 | 2.3.2. Update Embedded software | manual | 13d | 2017-07-19 A | 2017-08-04 A | 100% |  |  | HoangPM; HuongLX | 104h | 104h |
| 62 | 1.2.3.3 | 2.3.3. Code for Raspi, communication between Car(Pi) and controller | manual | 9d | 2017-07-19 A | 2017-07-31 A | 100% |  |  | AnhLB; HuongLX | 144h | 144h |
| 63 | 1.2.3.4 | 2.3.4. Add camera function and GearVR | manual | 7d | 2017-07-23 A | 2017-07-31 A | 100% |  |  | PhonngDC; TuDN | 112h | 112h |
| 64 | 1.2.3.5 | 2.3.5. Update Android application with more function | manual | 13d | 2017-07-19 A | 2017-08-04 A | 100% |  |  | LuatPD; PhongDC; TuDN | 312h | 312h |
| 65 | 1.2.3.6 | 2.3.6. Complete Car Model | manual | 11d | 2017-07-30 A | 2017-08-11 A | 100% |  |  | HuongLX; TuDN; AnhLB | 264h | 264h |
| 66 | 1.2.3.7 | 2.3.7 Run in fact | manual | 2d | 2017-07-10 | 2017-07-11 |  |  |  | MEx Team | 16h |  |
| 67 | 1.2.4 | **2.4. Testing** |  | 10d | 2017-08-07 A | 2017-08-18 A | 100% |  |  |  | 352h | 352h |
| 68 | 1.2.4.1 | 2.4.1. Design Test cases | manual | 3d | 2017-08-07 A | 2017-08-09 A | 100% |  |  | LuatPD; TuDN | 48h | 48h |
| 69 | 1.2.4.2 | 2.4.2. Hardware unit test | manual | 3d | 2017-08-07 A | 2017-08-09 A | 100% |  |  | HuongLX; HoangPM | 24h | 24h |
| 70 | 1.2.4.3 | 2.4.3. System test | manual | 7d | 2017-08-10 A | 2017-08-18 A | 100% |  |  | MEx Team | 56h | 56h |
| 71 | 1.2.4.4 | 2.4.4. Software unit test | manual | 7d | 2017-08-10 A | 2017-08-18 A | 100% |  |  | AnhLB; PhongDC | 112h | 112h |
| 72 | 1.2.4.5 | 2.4.5. Software system test | manual | 7d | 2017-08-10 A | 2017-08-18 A | 100% |  |  | PhongDC; TuDN | 112h | 112h |
| 73 | 1.3 | **2.5. Perform quality assurance** |  | 3d | 2017-08-15 A | 2017-08-17 A | 100% |  |  |  | 120h | 120h |
| 74 | 1.3.1 | 2.5.1. Review coding | manual | 3d | 2017-08-15 A | 2017-08-17 A | 100% |  |  | AnhLB; LuatPD | 48h | 48h |
| 75 | 1.3.2 | 2.5.2. Integration test | manual | 3d | 2017-08-15 A | 2017-08-17 A | 100% |  |  | LuatPD; PhongDC | 48h | 48h |
| 76 | 1.3.3 | 2.5.3. Acquire project team | manual | 3d | 2017-08-15 A | 2017-08-17 A | 100% |  |  | AnhLB | 24h | 24h |

| ID | WBS | Task | Type | Duration | Start | Finish | Complete | Resources | Work | Actual work |
| --- | --- | --- | --- | --- | --- | --- | --- | --- | --- | --- |
| 77 | 1.4 | **Prepare for the Thesis Defend** |  | 5d | 2017-08-20 A | 2017-08-25 A | 100% |  | 64h | 64h |
| 78 | 1.4.1 | 1. Project review | manual | 2d | 2017-08-20 A | 2017-08-21 A | 100% | MEx Team; Supervisor | 32h | 32h |
| 79 | 1.4.2 | 2. Print documents | manual | 1d | 2017-08-21 A | 2017-08-21 A | 100% | TuDN | 8h | 8h |
| 80 | 1.4.3 | 3. Prepare for the final presentation | manual | 3d | 2017-08-23 A | 2017-08-25 A | 100% | MEx Team | 24h | 24h |
| 81 | 1.5 | **Document** |  | 72d | 2017-05-11 A | 2017-08-19 A | 100% |  | 832h | 832h |
| 82 | 1.5.1 | 1. Report 1: Introduction | manual | 6d | 2017-05-11 A | 2017-05-18 A | 100% | TuDN; AnhLB | 96h | 96h |
| 83 | 1.5.2 | 2. Report 2: Project management plan | manual | 6d | 2017-05-22 A | 2017-05-29 A | 100% | TuDN | 48h | 48h |
| 84 | 1.5.3 | 3. Report 3: System requirements specifications | manual | 16d | 2017-05-29 A | 2017-06-19 A | 100% | LuatPD | 128h | 128h |
| 85 | 1.5.4 | 4. Report 4: System design description | manual | 10d | 2017-06-26 A | 2017-07-07 A | 100% | TuDN; LuatPD | 80h | 80h |
| 86 | 1.5.5 | 5. Report 5: System implementation & test | manual | 21d | 2017-07-10 A | 2017-08-07 A | 100% | AnhLB; LuatPD | 168h | 168h |
| 87 | 1.5.6 | 6. Report 6: System User's Manual | manual | 11d | 2017-08-07 A | 2017-08-19 A | 100% | TuDN; LuatPD | 88h | 88h |
| 88 | 1.5.7 | 7. Slide | manual | 7d | 2017-08-11 A | 2017-08-19 A | 100% | AnhLB; TuDN | 112h | 112h |
| 89 | 1.5.8 | 8. Final report | manual | 7d | 2017-08-11 A | 2017-08-19 A | 100% | TuDN; AnhLB | 112h | 112h |
